# 集团（股份、政务、金融、江分）资产云上线任务

Schedule from a web Gantt chart, 2025-07-18 to 2025-08-03.
Every day is a working day

## Schedule

| ID | WBS | Task | Duration | Start | Finish | Complete | inPeople |
| --- | --- | --- | --- | --- | --- | --- | --- |
| 2 | 1 | **UI模板差异化配置** | 1d | 2025-07-22 | 2025-07-22 |  |  |
| 3 | 1.1 | 政务 | 1d | 2025-07-22 | 2025-07-22 |  | 金鹏 |
| 4 | 1.2 | 金融 | 1d | 2025-07-22 | 2025-07-22 |  | 陈栎 |
| 5 | 1.3 | 股份 | 1d | 2025-07-22 | 2025-07-22 |  | 王世雷 |
| 6 | 2 | **工作流配置** | 1d | 2025-07-23 | 2025-07-23 |  |  |
| 7 | 2.1 | 政务 | 1d | 2025-07-23 | 2025-07-23 |  | 金鹏 |
| 8 | 2.2 | 金融 | 1d | 2025-07-23 | 2025-07-23 |  | 陈栎 |
| 9 | 2.3 | 股份（除江分） | 1d | 2025-07-23 | 2025-07-23 |  | 王世雷 |
| 10 | 2.4 | 江西分公司 | 1d | 2025-07-23 | 2025-07-23 |  | 郭加升、朱涛 |
| 11 | 3 | **407资产数据梳理及导入测试** | 1d | 2025-07-24 | 2025-07-24 |  |  |
| 12 | 3.1 | 政务 | 1d | 2025-07-24 | 2025-07-24 |  | 金鹏 |
| 13 | 3.2 | 金融 | 1d | 2025-07-24 | 2025-07-24 |  | 陈栎 |
| 14 | 3.3 | **股份（除江分）** | 1d | 2025-07-24 | 2025-07-24 |  | 王世雷 |
| 15 | 3.3.1 | 数据中心 | 1d | 2025-07-24 | 2025-07-24 |  | 王世雷、赵英杰 |
| 16 | 3.3.2 | 办公 | 1d | 2025-07-24 | 2025-07-24 |  | 闫雯 |
| 17 | 3.4 | 江西分公司 | 1d | 2025-07-24 | 2025-07-24 |  | 郭加升、朱涛 |
| 18 | 4 | **资产云推送使用信息变动到NC65程序开发** | 14d | 2025-07-18 | 2025-07-31 | 7% |  |
| 19 | 4.1 | 接口权限开放、表头数据开放 | 1d | 2025-07-18 | 2025-07-18 | 100% | 王世雷、张宏飞、陈冲 |
| 20 | 4.2 | 程序开发 | 14d | 2025-07-18 | 2025-07-31 |  | 陈冲 |
| 21 | 5 | 各机构资产云全员应用授权程序开发 | 1d | 2025-07-18 | 2025-07-18 |  | 张砾君 |
| 22 | 6 | **全员资产应用PC端和移动端发单测试** | 1d | 2025-07-18 | 2025-07-18 |  |  |
| 23 | 6.1 | 政务 | 1d | 2025-07-18 | 2025-07-18 |  |  |
| 24 | 6.2 | 金融 | 1d | 2025-07-18 | 2025-07-18 |  |  |
| 25 | 6.3 | 江西分公司 | 1d | 2025-07-18 | 2025-07-18 |  |  |

| ID | WBS | Task | Duration | Start | Finish |
| --- | --- | --- | --- | --- | --- |
| 26 | 6.4 | **股份（除江分）** | 1d | 2025-07-18 | 2025-07-18 |
| 27 | 6.4.1 | 数据中心 | 1d | 2025-07-18 | 2025-07-18 |
| 28 | 6.4.2 | 办公 | 1d | 2025-07-18 | 2025-07-18 |
| 29 | 7 | 资产云上线 | 3d | 2025-08-01 | 2025-08-03 |
